# Proyect1

Schedule from MS Project, 2010-08-09 to 2010-11-18, status date 2010-10-07, 24 hours a day, A marks actual dates.

## Calendars

- PIS-Interpool: Mon-Sun 00:00-24:00.

## Resources

| Resource | Group |
| --- | --- |
| Alejandro García | Verificación |
| Diego Ricca | Analistas |
| Federico Andrade | Esp. Técnico |
| Federico Trinidad | Esp. Técnico |
| Ignacio Infante | Esp. Técnico |
| Javier Madeiro | SQA |
| José Cordero | GUI |
| Juan Ghiringhelli | Administrador |
| Leticia Vilariño | GUI |
| Marcos Sander | Arquitecto |
| Martín Taruselli | Analistas |
| Vicente Acosta | SCM |
| Analistas |  |
| GUI |  |
| Arquitecto |  |
| Especialistas Técnicos |  |
| Admin |  |
| Implementadores |  |
| Enc. Integración |  |
| SQA |  |
| Juan Gh |  |
| Alejando Garcia |  |
| Vicente Acosta, Federico Trinidad |  |
| Vicente Acosta: Federico Trinidad |  |
| Vicente Acosta, Leticia Vilariño |  |
| Vicente Acosta, Federico Andrade |  |
| Federico Andrade, Federico Trinidad |  |
| Martín Tarusello, Diego Ricca, Nacho Infante |  |
| Martín Tarusello, Diego Ricca |  |
| Alejandro Garcia |  |
| Juan Ghiringhelli, Javier Madeiro, Marcos Sander |  |
| Diego Ricca, Ignacio Infante, Martín Taruselli, Federico Andrade, Federico Trinidad, Vicente Acosta |  |
| Federico Andrade, Vicente Acosta |  |
| Diego Ricca, Martín Taruselli |  |
| Ignacio Infante, Diego Ricca, Martín Taruselli, Federico Andrade, Federico Trinidad, Vicente Acosta |  |
| Ignacio Infante, Diego Ricca, Martín Taruselli, Federico Andrade, Federico Trinidad, Vicente Acosta, Leticia Vilariño |  |
| Vicente Acsta |  |

## Schedule

| ID | WBS | Task | Duration | Start | Finish | Predecessors | Complete | Remaining | Total slack | Free slack | Constraint | Resources | Work | Actual work |
| --- | --- | --- | --- | --- | --- | --- | --- | --- | --- | --- | --- | --- | --- | --- |
| 1 | 1 | **Fase inicial** | 27.42d | 2010-08-09 09:00 A | 2010-09-05 19:00 A |  | 100% |  |  |  |  |  | 532h | 532h |
| 2 | 1.1 | **Iteración 1** | 13.42d | 2010-08-09 09:00 A | 2010-08-22 19:00 A |  | 100% |  |  |  |  |  | 312h | 312h |
| 3 | 1.1.1 | Relevar requerimientos | 5.87w | 2010-08-09 09:00 A | 2010-08-22 19:00 A |  | 100% |  |  |  | start no earlier than 2010-08-09 09:00 | Analistas | 88h | 88h |
| 4 | 1.1.2 | Pautas GUI | 5.87w | 2010-08-09 09:00 A | 2010-08-22 19:00 A |  | 100% |  |  |  | start no earlier than 2010-08-09 09:00 | GUI | 88h | 88h |
| 5 | 1.1.3 | Modelo de dominio | 5.87w | 2010-08-09 09:00 A | 2010-08-22 19:00 A |  | 100% |  |  |  | finish no earlier than 2010-08-22 19:00 | Analistas | 88h | 88h |
| 6 | 1.1.4 | Definir arquitectura | 3.2w | 2010-08-16 09:00 A | 2010-08-22 19:00 A |  | 100% |  |  |  | finish no earlier than 2010-08-22 19:00 | Arquitecto | 48h | 48h |
| 7 | 1.2 | **Iteración 2** | 13.42d | 2010-08-23 09:00 A | 2010-09-05 19:00 A |  | 100% |  |  |  |  |  | 220h | 220h |
| 8 | 1.2.1 | Diseño prototipo | 2.93w | 2010-08-23 15:00 A | 2010-08-29 19:00 A | 3, 5, 6 | 100% |  |  |  | finish no earlier than 2010-08-29 19:00 | Especialistas Técnicos | 44h | 44h |
| 9 | 1.2.2 | Descripción del proyecto | 2.93w | 2010-08-23 09:00 A | 2010-08-29 13:00 A | 3, 4, 5, 6 | 100% |  |  |  |  | Admin | 44h | 44h |
| 10 | 1.2.3 | Plan de desarrollo | 2.93w | 2010-08-30 15:00 A | 2010-09-05 19:00 A | 9 | 100% |  |  |  | finish no earlier than 2010-09-05 19:00 | Analistas | 44h | 44h |
| 11 | 1.2.4 | Prototipo funcional | 2.93w | 2010-08-30 15:00 A | 2010-09-05 19:00 A | 8 | 100% |  |  |  | start no earlier than 2010-08-30 15:00 | Implementadores | 44h | 44h |
| 12 | 1.2.5 | Prototipo GUI | 2.93w | 2010-08-30 15:00 A | 2010-09-05 19:00 A | 4 | 100% |  |  |  | start no earlier than 2010-08-30 15:00 | GUI | 44h | 44h |
| 13 | 2 | **Fase elaboración** | 29.08d? | 2010-09-06 09:00 A | 2010-10-05 11:00 |  | 92% | 2.42d? | 43.62d |  |  |  | 771h | 709h |
| 14 | 2.1 | **Iteración 1** | 6.17d | 2010-09-06 09:00 A | 2010-09-12 13:00 A |  | 100% |  |  |  |  |  | 88h | 88h |
| 15 | 2.1.1 | Integración del prototipo | 2.93w | 2010-09-06 09:00 A | 2010-09-12 13:00 A | 8, 11 | 100% |  |  |  |  | Enc. Integración | 44h | 44h |
| 16 | 2.1.2 | Revisión de atributos de calidad | 2.93w | 2010-09-06 09:00 A | 2010-09-12 13:00 A | 9 | 100% |  |  |  | start no earlier than 2010-09-06 09:00 | SQA | 44h | 44h |
| 17 | 2.2 | **Iteración 2** | 15.08d? | 2010-09-20 09:00 A | 2010-10-05 11:00 |  | 91% | 1.41d? | 43.62d |  |  |  | 683h | 621h |
| 18 | 1 | Login a Facebook desde WP7 | 0.67d? | 2010-09-20 09:00 A | 2010-09-21 19:00 A |  | 100% |  |  |  |  | Vicente Acosta, Leticia Vilariño | 16h | 16h |
| 19 | 2 | Integrar al proyecto módulo de Facebook | 0.33d? | 2010-09-22 09:00 A | 2010-09-22 19:00 A | 18 | 100% |  |  |  |  | Vicente Acosta, Federico Andrade | 8h | 8h |
| 20 | 3 | Filtrar sospechosos según datos | 2d? | 2010-09-20 09:00 A | 2010-09-27 19:00 A |  | 100% |  |  |  |  | Federico Andrade | 48h | 48h |
| 21 | 4 | Armar tabla para datos sospechosos | 1.33d? | 2010-09-28 09:00 A | 2010-10-01 19:00 A | 20 | 100% |  |  |  |  | Federico Andrade, Federico Trinidad | 32h | 32h |
| 22 | 5 | Llenar tablas para pistas ciudad | 1.33d? | 2010-09-20 09:00 A | 2010-09-23 19:00 A |  | 100% |  |  |  |  | Federico Trinidad | 32h | 32h |
| 23 | 6 | Parsear noticias de ciudad de Bing | 2d? | 2010-09-24 09:00 A | 2010-10-01 19:00 A | 22 | 100% |  |  |  |  | Federico Trinidad | 48h | 48h |
| 24 | 7 | Servicios de Azure para WP7 para workflow de juego | 1.67d? | 2010-09-20 09:00 A | 2010-09-24 19:00 A |  | 100% |  |  |  |  | Ignacio Infante | 40h | 40h |
| 25 | 8 | Armar iteración para usuario | 1d? | 2010-09-20 09:00 A | 2010-09-22 19:00 A |  | 100% |  |  |  |  | Martín Tarusello, Diego Ricca, Nacho Infante | 24h | 24h |
| 26 | 9 | Modelar estructura de las pistas | 1.25d? | 2010-09-23 09:00 A | 2010-09-28 17:00 A | 25 | 100% |  |  |  |  | Martín Tarusello, Diego Ricca | 30h | 30h |
| 27 | 10 | Llenar tablas con datos definitivos | 1d? | 2010-09-28 17:00 A | 2010-10-01 17:00 A | 26 | 100% |  |  |  |  | Martín Tarusello, Diego Ricca | 24h | 24h |
| 28 | 11 | Integrar código workflow con Gui y datos | 1d? | 2010-09-30 09:00 A | 2010-10-05 11:00 A | 18, 25, 27 | 100% |  |  |  | start no earlier than 2010-09-30 09:00 | Martín Tarusello, Diego Ricca, Nacho Infante [66.7%] | 16h | 16h |
| 29 | 12 | Validar arquitectura | 1d? | 2010-09-20 09:00 A | 2010-09-22 19:00 A |  | 100% |  |  |  |  | Marcos Sander | 24h | 24h |
| 30 | 13 | Reuniones para completar base de datos | 1.67d? | 2010-09-23 09:00 A | 2010-09-29 19:00 A | 29 | 100% |  |  |  | start no earlier than 2010-09-23 09:00 | Marcos Sander | 40h | 40h |
| 31 | 14 | Diseño iteración | 0.67d? | 2010-09-30 09:00 A | 2010-10-01 19:00 A | 30 | 100% |  |  |  | start no earlier than 2010-09-30 09:00 | Marcos Sander | 16h | 16h |
| 32 | 15 | Planificar verificación de iteración | 0.33d? | 2010-09-20 09:00 A | 2010-09-20 19:00 A |  | 100% |  |  |  |  | Alejandro Garcia | 8h | 8h |
| 33 | 16 | Armar casos de prueba generales | 1.67d? | 2010-09-21 09:00 A | 2010-09-27 19:00 A | 32 | 100% |  |  |  | start no earlier than 2010-09-21 09:00 | Alejandro Garcia | 40h | 40h |
| 34 | 17 | Diseñar casos de prueba generales | 1.33d? | 2010-09-28 09:00 A | 2010-10-01 19:00 A | 33 | 100% |  |  |  | start no earlier than 2010-09-28 09:00 | Alejandro Garcia | 32h | 32h |
| 35 | 18 | RTF Modelo CU | 0.67d? | 2010-09-20 09:00 A | 2010-09-21 19:00 A |  | 100% |  |  |  |  | Javier Madeiro | 16h | 16h |
| 36 | 19 | RTF Arquitectura | 0.67d? | 2010-09-22 09:00 A | 2010-09-23 19:00 A | 35 | 100% |  |  |  | start no earlier than 2010-09-22 09:00 | Javier Madeiro | 16h | 16h |
| 37 | 20 | RTF Proyecto | 0.33d? | 2010-09-24 09:00 | 2010-09-24 17:00 | 36 |  |  | 54.38d |  | start no earlier than 2010-09-24 09:00 | Javier Madeiro | 8h |  |
| 38 | 21 | RTF Desarrollo | 0.67d? | 2010-09-27 09:00 A | 2010-09-28 19:00 A | 37 | 100% |  |  |  | start no earlier than 2010-09-27 09:00 | Javier Madeiro | 16h | 16h |
| 39 | 22 | RTF SCM | 0.67d? | 2010-09-29 09:00 | 2010-09-30 01:00 | 38 |  |  | 48.71d | 1.33d | start no earlier than 2010-09-29 09:00 | Javier Madeiro | 16h |  |
| 40 | 23 | RTF estimaciones | 0.33d? | 2010-10-01 09:00 | 2010-10-01 17:00 | 39 |  |  | 47.38d |  | start no earlier than 2010-10-01 09:00 | Javier Madeiro | 8h |  |
| 41 | 24 | Animaciones Silverlight | 3.33d? | 2010-09-20 09:00 A | 2010-10-01 19:00 A |  | 100% |  |  |  |  | José Cordero | 80h | 80h |
| 42 | 25 | Verificar código FE-IT2 | 1.67d | 2010-09-20 09:00 A | 2010-09-22 01:00 |  | 25% | 1.25d | 57.04d |  |  | Juan Ghiringhelli, Javier Madeiro, Marcos Sander | 40h | 10h |
| 43 | 26 | Buffer de error | 3h | 2010-10-02 21:00 | 2010-10-03 00:00 |  |  |  | 46.08d |  | finish no earlier than 2010-10-03 00:00 |  |  |  |
| 44 | 27 | Integración | 5h | 2010-10-01 09:00 A | 2010-10-01 16:00 A |  | 100% |  |  |  | start no earlier than 2010-10-01 09:00 | Ignacio Infante | 5h | 5h |

| ID | WBS | Task | Type | Duration | Start | Finish | Predecessors | Total slack | Free slack | Constraint | Resources | Work |
| --- | --- | --- | --- | --- | --- | --- | --- | --- | --- | --- | --- | --- |
| 45 | 3 | **Fase construcción** |  | 35.17d? | 2010-10-03 00:00 | 2010-11-07 04:00 |  | 9.92d | 0d |  |  | 542.5h |
| 46 | 3.1 | **Iteración 1** |  | 14.17d? | 2010-10-03 00:00 | 2010-10-17 04:00 |  | 29.83d | 0d |  |  | 320.5h |
| 47 | 3.1.1 | **Semana 09** |  | 7.04d? | 2010-10-03 00:00 | 2010-10-10 01:00 |  | 35.96d | 0d |  |  | 161.5h |
| 48 | 3.1.1.1 | **Diseño / Implementación** |  | 5.62d | 2010-10-04 09:00 | 2010-10-10 00:00 |  | 36d |  |  |  | 27h |
| 49 | 3.1.1.1.1 | Fin pantallas principales |  | 10h | 2010-10-04 09:00 | 2010-10-04 19:00 |  | 41.21d | 8.21d | start no earlier than 2010-10-04 09:00 | Leticia Vilariño | 10h |
| 50 | 3.1.1.1.2 | Actualización diseño según lo implementado |  | 12h | 2010-10-04 09:00 | 2010-10-04 21:00 |  | 41.12d | 6.12d | start no earlier than 2010-10-04 09:00 | Marcos Sander | 12h |
| 51 | 3.1.1.1.3 | Actualización verificación unitaria versión beta |  | 5h | 2010-10-04 09:00 | 2010-10-04 14:00 |  | 41.38d | 5.42d | start no earlier than 2010-10-04 09:00 | Diego Ricca, Ignacio Infante, Martín Taruselli, Federico Andrade, Federico Trinidad, Vicente Acosta | 5h |
| 52 | 3.1.1.1.4 | Liberación versión beta 1.0 | milestone | 0w | 2010-10-10 00:00 | 2010-10-10 00:00 | 51, 54 | 35.96d | 0d | start no earlier than 2010-10-10 00:00 |  |  |
| 53 | 3.1.1.2 | **Verificación** |  | 0.12d | 2010-10-09 00:00 | 2010-10-09 03:00 |  | 36.48d | 0d |  |  | 12h |
| 54 | 3.1.1.2.1 | **Verificar casos de uso** |  | 0.12d | 2010-10-09 00:00 | 2010-10-09 03:00 |  | 36.48d | 0.88d |  |  | 12h |
| 55 | 3.1.1.2.1.1 | Verificación casos de uso Login, Iniciar iteración, guardar estado |  | 3h | 2010-10-09 00:00 | 2010-10-09 03:00 |  | 36.48d |  | start no earlier than 2010-10-09 00:00 | Juan Ghiringhelli | 3h |
| 56 | 3.1.1.2.1.2 | Verificación casos de uso Interrogar Personaje, Actualizar Famoso, Actualizar Ciudad |  | 3h | 2010-10-09 00:00 | 2010-10-09 03:00 |  | 36.48d |  | start no earlier than 2010-10-09 00:00 | Javier Madeiro | 3h |
| 57 | 3.1.1.2.1.3 | Verificación casos de uso Obtener Ciudades, Viajar, Emitir orden de arresto, Arrestar |  | 3h | 2010-10-09 00:00 | 2010-10-09 03:00 |  | 36.48d |  | start no earlier than 2010-10-09 00:00 | Marcos Sander | 3h |
| 58 | 3.1.1.2.1.4 | Verificación casos de uso Listar Sospechoso, Filtrar sospechoso, Lenguaje, Salir |  | 3h | 2010-10-09 00:00 | 2010-10-09 03:00 |  | 36.48d |  | start no earlier than 2010-10-09 00:00 | Alejando Garcia | 3h |
| 59 | 3.1.1.3 | **Gestión del Proyecto** |  | 6.17d | 2010-10-03 00:00 | 2010-10-09 04:00 |  | 36.83d |  |  |  | 12h |
| 60 | 3.1.1.3.1 | Seguimiento en jornadas implementación |  | 5h | 2010-10-03 00:00 | 2010-10-03 05:00 |  | 42.62d | 1.79d | start no earlier than 2010-10-03 00:00 | Juan Ghiringhelli | 5h |
| 61 | 3.1.1.3.2 | Presentación al director |  | 2h | 2010-10-05 00:00 | 2010-10-05 02:00 | 60 | 40.88d | 0.92d | start no earlier than 2010-10-05 00:00 | Juan Ghiringhelli | 2h |
| 62 | 3.1.1.3.3 | Gestión de riesgos |  | 1h | 2010-10-06 00:00 | 2010-10-06 01:00 | 61 | 39.96d |  | start no earlier than 2010-10-06 00:00 | Juan Ghiringhelli | 1h |
| 63 | 3.1.1.3.4 | Modificar cronograma |  | 4h | 2010-10-09 00:00 | 2010-10-09 04:00 | 60 | 36.83d |  | start no earlier than 2010-10-09 00:00 | Juan Ghiringhelli | 4h |
| 64 | 3.1.1.4 | **Gestión de la Calidad** |  | 5.19d? | 2010-10-04 09:00 | 2010-10-09 13:30 |  | 36.44d |  |  |  | 21h |
| 65 | 3.1.1.4.1 | **RTF Planificación del Proyecto** |  | 0.19d? | 2010-10-04 09:00 | 2010-10-04 13:30 |  | 41.44d |  |  |  | 9h |
| 66 | 3.1.1.4.1.1 | Estudio del Project del Proyecto |  | 1h? | 2010-10-04 09:00 | 2010-10-04 10:00 |  | 41.44d | 0d |  | Javier Madeiro | 1h |
| 67 | 3.1.1.4.1.2 | Revisión Técnica |  | 1.5h? | 2010-10-04 10:00 | 2010-10-04 11:30 | 66 | 41.44d | 0d |  | Alejandro García; Javier Madeiro; Marcos Sander; Juan Ghiringhelli | 6h |
| 68 | 3.1.1.4.1.3 | Conclusiones, proponer acciones correctivas |  | 1h? | 2010-10-04 11:30 | 2010-10-04 12:30 | 67 | 41.44d | 0d |  | Javier Madeiro | 1h |
| 69 | 3.1.1.4.1.4 | Seguimiento de la RTF |  | 1h? | 2010-10-04 12:30 | 2010-10-04 13:30 | 68 | 41.44d |  |  | Javier Madeiro | 1h |
| 70 | 3.1.1.4.2 | Revisión de Documentos |  | 6h? | 2010-10-09 07:30 | 2010-10-09 13:30 | 73 | 36.44d |  |  | Alejandro García; Javier Madeiro | 12h |

| ID | WBS | Task | Duration | Start | Finish | Predecessors | Total slack | Free slack | Constraint | Resources | Work |
| --- | --- | --- | --- | --- | --- | --- | --- | --- | --- | --- | --- |
| 71 | 3.1.1.5 | **Gestión de la Configuración** | 0.04d | 2010-10-10 00:00 | 2010-10-10 01:00 |  | 35.96d |  |  |  | 1h |
| 72 | 3.1.1.5.1 | Establecimiento de linea base de código | 1h | 2010-10-10 00:00 | 2010-10-10 01:00 | 52 | 35.96d |  | start no earlier than 2010-10-09 00:00 | Vicente Acsta | 1h |
| 73 | 3.1.1.6 | **Entregables** | 4.94d? | 2010-10-04 09:00 | 2010-10-09 07:30 |  | 36.44d | 0d |  |  | 52.5h |
| 74 | 3.1.1.6.1 | Documento de evaluación y ajuste del plan de VyV | 2h | 2010-10-09 03:00 | 2010-10-09 05:00 | 53 | 36.48d | 0.04d |  | Alejandro García | 2h |
| 75 | 3.1.1.6.2 | Evaluación de la verificación | 2h | 2010-10-09 00:00 | 2010-10-09 02:00 |  | 36.6d | 0.17d | start no earlier than 2010-10-09 00:00 | Alejandro García | 2h |
| 76 | 3.1.1.6.3 | Informe de verificación de documento | 2h | 2010-10-09 00:00 | 2010-10-09 02:00 |  | 36.6d | 0.17d | start no earlier than 2010-10-09 00:00 | Alejandro García | 2h |
| 77 | 3.1.1.6.4 | Reporte de pruebas | 4h | 2010-10-09 00:00 | 2010-10-09 04:00 |  | 36.52d | 0.08d | start no earlier than 2010-10-09 00:00 | Alejandro García | 4h |
| 78 | 3.1.1.6.5 | Documento de evaluación y ajuste del plan de calidad | 2h | 2010-10-09 00:00 | 2010-10-09 02:00 |  | 36.6d | 0.17d | start no earlier than 2010-10-09 00:00 | Javier Madeiro | 2h |
| 79 | 3.1.1.6.6 | Informe de revisión de SQA | 2h | 2010-10-09 00:00 | 2010-10-09 02:00 |  | 36.6d | 0.17d | start no earlier than 2010-10-09 00:00 | Javier Madeiro | 2h |
| 80 | 3.1.1.6.7 | Informe de RTF | 1.5h | 2010-10-07 00:00 | 2010-10-07 01:30 |  | 38.62d | 2.19d | start no earlier than 2010-10-07 00:00 | Javier Madeiro | 1.5h |
| 81 | 3.1.1.6.8 | Materiales para soporte al usuario | 2h | 2010-10-07 00:00 | 2010-10-07 02:00 |  | 38.6d | 2.17d | start no earlier than 2010-10-07 00:00 | José Cordero | 2h |
| 82 | 3.1.1.6.9 | Acta de reunión con el director del proyecto | 0.5h | 2010-10-06 00:00 | 2010-10-06 00:30 |  | 39.67d | 3.23d | start no earlier than 2010-10-06 00:00 | Juan Ghiringhelli | 0.5h |
| 83 | 3.1.1.6.10 | Documento de riesgos | 1h | 2010-10-06 00:00 | 2010-10-06 01:00 |  | 39.65d | 3.21d | start no earlier than 2010-10-06 00:00 | Juan Ghiringhelli | 1h |
| 84 | 3.1.1.6.11 | Informe de situación de proyecto | 1h | 2010-10-09 00:00 | 2010-10-09 01:00 |  | 36.65d | 0.21d | start no earlier than 2010-10-09 00:00 | Juan Ghiringhelli | 1h |
| 85 | 3.1.1.6.12 | Presentación al director del proyecto | 0.5d | 2010-10-04 09:00 | 2010-10-04 21:00 |  | 40.81d | 4.38d |  | Juan Ghiringhelli | 12h |
| 86 | 3.1.1.6.13 | Registro de actividades | 1h | 2010-10-09 00:00 | 2010-10-09 01:00 |  | 36.65d | 0.21d | start no earlier than 2010-10-09 00:00 | Juan Ghiringhelli | 1h |
| 87 | 3.1.1.6.14 | Modelo de diseño | 6h | 2010-10-09 00:00 | 2010-10-09 06:00 |  | 36.44d | 0d | start no earlier than 2010-10-09 00:00 | Marcos Sander | 6h |
| 88 | 3.1.1.6.15 | Plan de desarrollo | 2h | 2010-10-09 00:00 | 2010-10-09 02:00 |  | 36.6d | 0.17d | start no earlier than 2010-10-09 00:00 | Marcos Sander | 2h |
| 89 | 3.1.1.6.16 | Informe de integración | 2h | 2010-10-09 00:00 | 2010-10-09 02:00 |  | 36.6d | 0.17d | start no earlier than 2010-10-09 00:00 | Ignacio Infante | 2h |
| 90 | 3.1.1.6.17 | Plan de integración de la iteración | 2h | 2010-10-09 00:00 | 2010-10-09 02:00 |  | 36.6d | 0.17d | start no earlier than 2010-10-09 00:00 | Ignacio Infante | 2h |
| 91 | 3.1.1.6.18 | Informe de verificación unitaria | 0.5h? | 2010-10-09 00:00 | 2010-10-09 00:30 |  | 36.67d | 0.23d | start no earlier than 2010-10-09 00:00 | Ignacio Infante; Marcos Sander | 1h |
| 92 | 3.1.1.6.19 | Descripción de la versión | 2h | 2010-10-09 00:00 | 2010-10-09 02:00 |  | 36.6d | 0.17d | start no earlier than 2010-10-09 00:00 | Vicente Acosta | 2h |
| 93 | 3.1.1.6.20 | Informe de la línea base del proyecto | 3h | 2010-10-09 00:00 | 2010-10-09 03:00 |  | 36.56d | 0.12d | start no earlier than 2010-10-09 00:00 | Vicente Acosta | 3h |
| 94 | 3.1.1.6.21 | Entrega semanal de SQA | 1.5h | 2010-10-09 06:00 | 2010-10-09 07:30 | 74, 75, 76, 77, 78, 79, 80, 81, 82, 83, 84, 85, 86, 87, 88, 89, 90, 91, 92, 93 | 36.44d |  |  | Javier Madeiro | 1.5h |
| 95 | 3.1.1.7 | Buffer de error | 3h | 2010-10-09 21:00 | 2010-10-10 00:00 |  | 36d |  | finish no earlier than 2010-10-10 00:00 | Alejandro García; Diego Ricca; Federico Andrade; Federico Trinidad; Ignacio Infante; Javier Madeiro; José Cordero; Juan Ghiringhelli; Leticia Vilariño; Marcos Sander; Martín Taruselli; Vicente Acosta | 36h |

| ID | WBS | Task | Duration | Start | Finish | Predecessors | Total slack | Free slack | Constraint | Resources | Work |
| --- | --- | --- | --- | --- | --- | --- | --- | --- | --- | --- | --- |
| 96 | 3.1.2 | **Semana 10** | 7.12d? | 2010-10-10 01:00 | 2010-10-17 04:00 | 47 | 29.83d | 0d |  |  | 159h |
| 97 | 3.1.2.1 | **Diseño / Implementación** | 5.96d | 2010-10-11 00:00 | 2010-10-16 23:00 |  | 30.04d |  |  |  | 58h |
| 98 | 3.1.2.1.1 | Armar datos Gran sospechoso | 10h | 2010-10-13 00:00 | 2010-10-13 10:00 |  | 33.29d | 3.25d | start no earlier than 2010-10-13 00:00 | Federico Andrade, Vicente Acosta | 10h |
| 99 | 3.1.2.1.2 | Depurar parser para traer noticias dinámicas | 5h | 2010-10-13 00:00 | 2010-10-13 05:00 |  | 33.5d | 3.46d | start no earlier than 2010-10-13 00:00 | Federico Trinidad | 5h |
| 100 | 3.1.2.1.3 | Armar algoritmo de tiempo para el juego | 2h | 2010-10-13 00:00 | 2010-10-13 02:00 |  | 33.92d |  | start no earlier than 2010-10-13 00:00 | Juan Ghiringhelli | 2h |
| 101 | 3.1.2.1.4 | Menu de ayuda | 4h | 2010-10-13 00:00 | 2010-10-13 04:00 |  | 33.83d |  | start no earlier than 2010-10-13 00:00 | José Cordero | 4h |
| 102 | 3.1.2.1.5 | Inicio pantallas inicio y fin del juego | 5h | 2010-10-13 00:00 | 2010-10-13 05:00 | 49 | 33.79d |  | start no earlier than 2010-10-13 00:00 | Leticia Vilariño; José Cordero | 10h |
| 103 | 3.1.2.1.6 | Inicio de código manejo multi-usuario | 10h | 2010-10-13 00:00 | 2010-10-13 10:00 |  | 33.29d | 3.25d | start no earlier than 2010-10-13 00:00 | Diego Ricca, Martín Taruselli | 10h |
| 104 | 3.1.2.1.7 | Diseño casos de uso para iteración 1 | 5h | 2010-10-11 00:00 | 2010-10-11 05:00 | 50 | 35.79d |  | start no earlier than 2010-10-11 00:00 | Marcos Sander | 5h |
| 105 | 3.1.2.1.8 | Diseño casos de prueba para iteración 1 | 5h | 2010-10-11 00:00 | 2010-10-11 05:00 | 51 | 35.79d |  | start no earlier than 2010-10-11 00:00 | Alejandro García | 5h |
| 106 | 3.1.2.1.9 | Verificación unitaria | 3h | 2010-10-16 16:00 | 2010-10-16 19:00 | 98, 99, 103 | 30.04d | 0d | finish no earlier than 2010-10-16 19:00 | Ignacio Infante, Diego Ricca, Martín Taruselli, Federico Andrade, Federico Trinidad, Vicente Acosta | 3h |
| 107 | 3.1.2.1.10 | Integración iteración 1 | 4h | 2010-10-16 19:00 | 2010-10-16 23:00 | 106 | 30.04d |  | start no earlier than 2010-10-15 09:00 | Ignacio Infante, Diego Ricca, Martín Taruselli, Federico Andrade, Federico Trinidad, Vicente Acosta, Leticia Vilariño | 4h |
| 108 | 3.1.2.2 | **Verificación** | 1.12d | 2010-10-11 00:00 | 2010-10-12 03:00 |  | 34.88d |  |  |  | 27h |
| 109 | 3.1.2.2.1 | **Verificar casos de uso** | 0.12d | 2010-10-11 00:00 | 2010-10-11 03:00 |  | 35.75d |  |  |  | 12h |
| 110 | 3.1.2.2.1.1 | Verificación casos de uso Login, Iniciar iteración, guardar estado | 3h | 2010-10-11 00:00 | 2010-10-11 03:00 |  | 35.75d | 0.88d | start no earlier than 2010-10-11 00:00 | Juan Ghiringhelli | 3h |
| 111 | 3.1.2.2.1.2 | Verificación casos de uso Interrogar Personaje, Actualizar Famoso, Actualizar Ciudad | 3h | 2010-10-11 00:00 | 2010-10-11 03:00 |  | 35.75d | 0.88d | start no earlier than 2010-10-11 00:00 | Javier Madeiro | 3h |
| 112 | 3.1.2.2.1.3 | Verificación casos de uso Obtener Ciudades, Viajar, Emitir orden de arresto, Arrestar | 3h | 2010-10-11 00:00 | 2010-10-11 03:00 |  | 35.75d | 0.88d | start no earlier than 2010-10-11 00:00 | Marcos Sander | 3h |
| 113 | 3.1.2.2.1.4 | Verificación casos de uso Listar Sospechoso, Filtrar sospechoso, Lenguaje, Salir | 3h | 2010-10-11 00:00 | 2010-10-11 03:00 |  | 35.75d | 0.88d | start no earlier than 2010-10-11 00:00 | Alejando Garcia | 3h |
| 114 | 3.1.2.2.2 | **Corregir casos de uso** | 0.12d | 2010-10-12 00:00 | 2010-10-12 03:00 |  | 34.88d |  |  |  | 15h |
| 115 | 3.1.2.2.2.1 | Corregir casos de uso Login, Iniciar iteración, guardar estado | 3h | 2010-10-12 00:00 | 2010-10-12 03:00 | 110 | 34.88d |  | start no earlier than 2010-10-12 00:00 | Martín Taruselli; Diego Ricca | 6h |
| 116 | 3.1.2.2.2.2 | Corregir casos de uso Interrogar Personaje, Actualizar Famoso, Actualizar Ciudad | 3h | 2010-10-12 00:00 | 2010-10-12 03:00 | 111 | 34.88d |  | start no earlier than 2010-10-12 00:00 | Vicente Acosta: Federico Trinidad | 3h |
| 117 | 3.1.2.2.2.3 | Corregir casos de uso Obtener Ciudades, Viajar, Emitir orden de arresto, Arrestar | 3h | 2010-10-12 00:00 | 2010-10-12 03:00 | 112 | 34.88d |  | start no earlier than 2010-10-12 00:00 | Ignacio Infante | 3h |
| 118 | 3.1.2.2.2.4 | Corregir casos de uso Listar Sospechoso, Filtrar sospechoso, Lenguaje, Salir | 3h | 2010-10-12 00:00 | 2010-10-12 03:00 | 113 | 34.88d |  | start no earlier than 2010-10-12 00:00 | Federico Andrade | 3h |
| 119 | 3.1.2.3 | **Gestión del Proyecto** | 6.17d | 2010-10-11 00:00 | 2010-10-17 04:00 |  | 29.83d |  |  |  | 11h |
| 120 | 3.1.2.3.1 | Seguimiento por medio de mails, conversaciones, revisión de objetivos de fase y pedido de informes | 3h | 2010-10-11 00:00 | 2010-10-11 03:00 |  | 35.79d | 2.88d | start no earlier than 2010-10-11 00:00 | Juan Ghiringhelli | 3h |
| 121 | 3.1.2.3.2 | Revisar estimaciones y medidas | 2h | 2010-10-12 00:00 | 2010-10-12 02:00 |  | 34.92d |  | start no earlier than 2010-10-12 00:00 | Juan Ghiringhelli | 2h |
| 122 | 3.1.2.3.3 | Preparar reunión quincenal | 2h | 2010-10-14 00:00 | 2010-10-14 02:00 | 120 | 32.92d |  | start no earlier than 2010-10-14 00:00 | Juan Ghiringhelli | 2h |
| 123 | 3.1.2.3.4 | Seguimiento en jornadas de implementación | 4h | 2010-10-17 00:00 | 2010-10-17 04:00 |  | 29.83d |  | start no earlier than 2010-10-17 00:00 | Juan Ghiringhelli | 4h |

| ID | WBS | Task | Type | Duration | Start | Finish | Predecessors | Total slack | Free slack | Constraint | Resources | Work |
| --- | --- | --- | --- | --- | --- | --- | --- | --- | --- | --- | --- | --- |
| 124 | 3.1.2.4 | **Gestión de la Calidad** |  | 0.25d? | 2010-10-16 11:00 | 2010-10-16 17:00 |  | 30.29d |  |  |  | 12h |
| 125 | 3.1.2.4.1 | Revisión de Documentos |  | 6h? | 2010-10-16 11:00 | 2010-10-16 17:00 | 127 | 30.29d |  |  | Alejandro García; Javier Madeiro | 12h |
| 126 | 3.1.2.5 | Gestión de la Configuración |  | 1d? | 2010-10-10 01:00 | 2010-10-11 01:00 |  | 35.96d |  |  |  |  |
| 127 | 3.1.2.6 | **Entregables** |  | 2.46d | 2010-10-14 00:00 | 2010-10-16 11:00 |  | 30.29d | 0d |  |  | 39h |
| 128 | 3.1.2.6.1 | Modelo de casos de prueba |  | 10h | 2010-10-16 00:00 | 2010-10-16 10:00 |  | 30.29d | 0d | start no earlier than 2010-10-16 00:00 | Alejandro García | 10h |
| 129 | 3.1.2.6.2 | Plan de verificación de la iteración |  | 3h | 2010-10-16 00:00 | 2010-10-16 03:00 |  | 30.58d | 0.29d | start no earlier than 2010-10-16 00:00 | Alejandro García | 3h |
| 130 | 3.1.2.6.3 | Materiales para capacitación |  | 2h | 2010-10-14 00:00 | 2010-10-14 02:00 |  | 32.62d | 2.33d | start no earlier than 2010-10-14 00:00 | José Cordero | 2h |
| 131 | 3.1.2.6.4 | Materiales para soporte al usuario |  | 2h | 2010-10-14 00:00 | 2010-10-14 02:00 |  | 32.62d | 2.33d | start no earlier than 2010-10-14 00:00 | José Cordero | 2h |
| 132 | 3.1.2.6.5 | Acta de reunión de equipo |  | 0.5h | 2010-10-16 00:00 | 2010-10-16 00:30 |  | 30.69d | 0.4d | start no earlier than 2010-10-16 00:00 | Juan Ghiringhelli | 0.5h |
| 133 | 3.1.2.6.6 | Documento de riesgos |  | 0.5h | 2010-10-16 00:00 | 2010-10-16 00:30 |  | 30.69d | 0.4d | start no earlier than 2010-10-16 00:00 | Juan Ghiringhelli | 0.5h |
| 134 | 3.1.2.6.7 | Documento de validación con el cliente |  | 0.5h | 2010-10-14 00:00 | 2010-10-14 00:30 |  | 32.69d | 2.4d | start no earlier than 2010-10-14 00:00 | Juan Ghiringhelli | 0.5h |
| 135 | 3.1.2.6.8 | Informe de situación de proyecto |  | 1h | 2010-10-16 00:00 | 2010-10-16 01:00 |  | 30.67d | 0.38d | start no earlier than 2010-10-16 00:00 | Juan Ghiringhelli | 1h |
| 136 | 3.1.2.6.9 | Lecciones Aprendidas |  | 0.5h | 2010-10-16 00:00 | 2010-10-16 00:30 |  | 30.69d | 0.4d | start no earlier than 2010-10-16 00:00 | Juan Ghiringhelli | 0.5h |
| 137 | 3.1.2.6.10 | Plan de la iteración |  | 2h | 2010-10-16 00:00 | 2010-10-16 02:00 |  | 30.62d | 0.33d | start no earlier than 2010-10-16 00:00 | Juan Ghiringhelli | 2h |
| 138 | 3.1.2.6.11 | Registro de actividades |  | 1h | 2010-10-16 00:00 | 2010-10-16 01:00 |  | 30.67d | 0.38d | start no earlier than 2010-10-16 00:00 | Juan Ghiringhelli | 1h |
| 139 | 3.1.2.6.12 | Modelo de Datos |  | 1h | 2010-10-16 00:00 | 2010-10-16 01:00 |  | 30.67d | 0.38d | start no earlier than 2010-10-16 00:00 | Marcos Sander | 1h |
| 140 | 3.1.2.6.13 | Modelo de diseño |  | 4h | 2010-10-16 00:00 | 2010-10-16 04:00 |  | 30.54d | 0.25d | start no earlier than 2010-10-16 00:00 | Marcos Sander | 4h |
| 141 | 3.1.2.6.14 | Modelo de Implementación |  | 2h | 2010-10-16 00:00 | 2010-10-16 02:00 |  | 30.62d | 0.33d | start no earlier than 2010-10-16 00:00 | Marcos Sander | 2h |
| 142 | 3.1.2.6.15 | Ejecutable de la Iteración | milestone | 0h | 2010-10-16 00:00 | 2010-10-16 00:00 |  | 30.71d | 0.42d | start no earlier than 2010-10-16 00:00 | Ignacio Infante |  |
| 143 | 3.1.2.6.16 | Informe de integración |  | 1h | 2010-10-16 00:00 | 2010-10-16 01:00 |  | 30.67d | 0.38d | start no earlier than 2010-10-16 00:00 | Ignacio Infante | 1h |
| 144 | 3.1.2.6.17 | Plan de integración de la iteración |  | 1h | 2010-10-16 00:00 | 2010-10-16 01:00 |  | 30.67d | 0.38d | start no earlier than 2010-10-16 00:00 | Ignacio Infante | 1h |
| 145 | 3.1.2.6.18 | Gestión de cambios |  | 1h | 2010-10-16 00:00 | 2010-10-16 01:00 |  | 30.67d | 0.38d | start no earlier than 2010-10-16 00:00 | Vicente Acosta | 1h |
| 146 | 3.1.2.6.19 | Notas de la versión |  | 3h | 2010-10-16 00:00 | 2010-10-16 03:00 |  | 30.58d | 0.29d | start no earlier than 2010-10-16 00:00 | Vicente Acosta | 3h |
| 147 | 3.1.2.6.20 | Registro de versiones |  | 2h | 2010-10-16 00:00 | 2010-10-16 02:00 |  | 30.62d | 0.33d | start no earlier than 2010-10-16 00:00 | Vicente Acosta | 2h |
| 148 | 3.1.2.6.21 | Entrega semanal de SQA |  | 1h | 2010-10-16 10:00 | 2010-10-16 11:00 | 128, 129, 130, 131, 132, 133, 134, 135, 136, 137, 138, 139, 140, 141, 142, 143, 144, 145, 146, 147 | 30.29d |  | start no earlier than 2010-10-16 00:00 | Javier Madeiro | 1h |
| 149 | 3.1.2.7 | Presentación al cliente | milestone | 0h | 2010-10-13 00:00 | 2010-10-13 00:00 |  | 34d |  | start no earlier than 2010-10-13 00:00 |  |  |
| 150 | 3.1.2.8 | Buffer de error |  | 1h? | 2010-10-17 00:00 | 2010-10-17 01:00 |  | 29.96d |  | start no earlier than 2010-10-17 00:00 | Alejandro García; Diego Ricca; Federico Andrade; Federico Trinidad; Ignacio Infante; Javier Madeiro; José Cordero; Juan Ghiringhelli; Leticia Vilariño; Marcos Sander; Martín Taruselli; Vicente Acosta | 12h |

| ID | WBS | Task | Type | Duration | Start | Finish | Predecessors | Total slack | Free slack | Constraint | Resources | Work |
| --- | --- | --- | --- | --- | --- | --- | --- | --- | --- | --- | --- | --- |
| 151 | 3.2 | **Iteración 2** |  | 21d? | 2010-10-17 04:00 | 2010-11-07 04:00 | 46 | 9.92d |  |  |  | 222h |
| 152 | 3.2.1 | **Semana 11** |  | 6.88d? | 2010-10-17 04:00 | 2010-10-24 01:00 | 96 | 24.04d |  |  |  | 74h |
| 153 | 3.2.1.1 | Diseño / Implementación |  | 1d? | 2010-10-17 04:00 | 2010-10-18 04:00 |  | 29.92d |  |  |  |  |
| 154 | 3.2.1.2 | Verificación |  | 1d? | 2010-10-17 04:00 | 2010-10-18 04:00 |  | 29.92d |  |  |  |  |
| 155 | 3.2.1.3 | **Gestión del Proyecto** |  | 2.92d | 2010-10-17 04:00 | 2010-10-20 02:00 |  | 28d |  |  |  | 5h |
| 156 | 3.2.1.3.1 | Seguimiento por medio de mails, conversaciones, revisión de objetivos de fase y pedido de informes |  | 3h | 2010-10-17 04:00 | 2010-10-17 07:00 |  | 30.79d |  | start no earlier than 2010-10-11 00:00 | Juan Ghiringhelli | 3h |
| 157 | 3.2.1.3.2 | Seguimiento de riesgos |  | 2h | 2010-10-20 00:00 | 2010-10-20 02:00 |  | 28d |  | start no earlier than 2010-10-20 00:00 | Juan Ghiringhelli | 2h |
| 158 | 3.2.1.4 | **Gestión de la Calidad** |  | 0.21d? | 2010-10-17 04:00 | 2010-10-17 09:00 |  | 30.62d |  |  |  | 11h |
| 159 | 3.2.1.4.1 | **RTF del Código** |  | 0.21d? | 2010-10-17 04:00 | 2010-10-17 09:00 |  | 30.62d |  |  |  | 11h |
| 160 | 3.2.1.4.1.1 | Estudio del Project del Proyecto |  | 1h? | 2010-10-17 04:00 | 2010-10-17 05:00 |  | 30.62d | 0d |  | Javier Madeiro | 1h |
| 161 | 3.2.1.4.1.2 | Revisión Técnica |  | 2h? | 2010-10-17 05:00 | 2010-10-17 07:00 | 160 | 30.62d | 0d |  | Javier Madeiro; Marcos Sander; Juan Ghiringhelli; Ignacio Infante | 8h |
| 162 | 3.2.1.4.1.3 | Conclusiones, proponer acciones correctivas |  | 1h? | 2010-10-17 07:00 | 2010-10-17 08:00 | 161 | 30.62d | 0d |  | Javier Madeiro | 1h |
| 163 | 3.2.1.4.1.4 | Seguimiento de la RTF |  | 1h? | 2010-10-17 08:00 | 2010-10-17 09:00 | 162 | 30.71d |  |  | Javier Madeiro | 1h |
| 164 | 3.2.1.5 | Revisión de Documentos |  | 6h? | 2010-10-17 04:00 | 2010-10-17 10:00 |  | 30.67d |  |  | Alejandro García; Javier Madeiro | 12h |
| 165 | 3.2.1.6 | Gestión de la Configuración |  | 1d? | 2010-10-17 04:00 | 2010-10-18 04:00 |  | 29.92d |  |  |  |  |
| 166 | 3.2.1.7 | **Entregables** |  | 2.23d | 2010-10-21 00:00 | 2010-10-23 05:30 |  | 24.85d |  |  |  | 34h |
| 167 | 3.2.1.7.1 | Documento de evaluación y ajuste del plan de VyV |  | 2h | 2010-10-23 00:00 | 2010-10-23 02:00 |  | 24.94d | 0.08d | start no earlier than 2010-10-23 00:00 | Alejandro García | 2h |
| 168 | 3.2.1.7.2 | Evaluación de la verificación |  | 3h | 2010-10-23 00:00 | 2010-10-23 03:00 |  | 24.9d | 0.04d | start no earlier than 2010-10-23 00:00 | Alejandro García | 3h |
| 169 | 3.2.1.7.3 | Informe de verificación de documento (Documentación técnica) |  | 2h | 2010-10-23 00:00 | 2010-10-23 02:00 |  | 24.94d | 0.08d | start no earlier than 2010-10-23 00:00 | Alejandro García | 2h |
| 170 | 3.2.1.7.4 | Reporte de pruebas |  | 4h | 2010-10-23 00:00 | 2010-10-23 04:00 |  | 24.85d | 0d | start no earlier than 2010-10-23 00:00 | Alejandro García | 4h |
| 171 | 3.2.1.7.5 | Documento de evaluación y ajuste del plan de calidad |  | 2h | 2010-10-23 00:00 | 2010-10-23 02:00 |  | 24.94d | 0.08d | start no earlier than 2010-10-23 00:00 | Javier Madeiro | 2h |
| 172 | 3.2.1.7.6 | Informe de revisión de SQA |  | 2h | 2010-10-23 00:00 | 2010-10-23 02:00 |  | 24.94d | 0.08d | start no earlier than 2010-10-23 00:00 | Javier Madeiro | 2h |
| 173 | 3.2.1.7.7 | Informe de RTF |  | 1.5h | 2010-10-23 00:00 | 2010-10-23 01:30 | 162 | 24.96d | 0.1d | start no earlier than 2010-10-23 00:00 | Javier Madeiro | 1.5h |
| 174 | 3.2.1.7.8 | Materiales para capacitación |  | 2h | 2010-10-21 00:00 | 2010-10-21 02:00 |  | 26.94d | 2.08d | start no earlier than 2010-10-21 00:00 | José Cordero | 2h |
| 175 | 3.2.1.7.9 | Materiales para soporte al usuario |  | 2h | 2010-10-21 00:00 | 2010-10-21 02:00 |  | 26.94d | 2.08d | start no earlier than 2010-10-21 00:00 | José Cordero | 2h |
| 176 | 3.2.1.7.10 | Documento de Evaluacion y Ajustes al Plan del Proyecto |  | 1h | 2010-10-23 00:00 | 2010-10-23 01:00 |  | 24.98d | 0.12d | start no earlier than 2010-10-23 00:00 | Juan Ghiringhelli | 1h |
| 177 | 3.2.1.7.11 | Informe de situación de proyecto |  | 1h | 2010-10-23 00:00 | 2010-10-23 01:00 |  | 24.98d | 0.12d | start no earlier than 2010-10-23 00:00 | Juan Ghiringhelli | 1h |
| 178 | 3.2.1.7.12 | Registro de actividades |  | 1h | 2010-10-23 00:00 | 2010-10-23 01:00 |  | 24.98d | 0.12d | start no earlier than 2010-10-23 00:00 | Juan Ghiringhelli | 1h |
| 179 | 3.2.1.7.13 | Documentación técnica |  | 1h | 2010-10-23 00:00 | 2010-10-23 01:00 |  | 24.98d | 0.12d | start no earlier than 2010-10-23 00:00 | Juan Ghiringhelli; Vicente Acosta | 2h |
| 180 | 3.2.1.7.14 | Plan de desarrollo |  | 1h | 2010-10-23 00:00 | 2010-10-23 01:00 |  | 24.98d | 0.12d | start no earlier than 2010-10-23 00:00 | Marcos Sander | 1h |
| 181 | 3.2.1.7.15 | Ejecutable de la Iteración | milestone | 0h | 2010-10-23 00:00 | 2010-10-23 00:00 |  | 25.02d | 0.17d | start no earlier than 2010-10-23 00:00 | Marcos Sander |  |
| 182 | 3.2.1.7.16 | Informe de verificación unitaria |  | 0.5h | 2010-10-23 00:00 | 2010-10-23 00:30 |  | 25d | 0.15d | start no earlier than 2010-10-23 00:00 | Ignacio Infante; Marcos Sander | 1h |
| 183 | 3.2.1.7.17 | Descripción de la versión |  | 2h | 2010-10-23 00:00 | 2010-10-23 02:00 |  | 24.94d | 0.08d | start no earlier than 2010-10-23 00:00 | Vicente Acosta | 2h |
| 184 | 3.2.1.7.18 | Informe de la línea base del proyecto |  | 3h | 2010-10-23 00:00 | 2010-10-23 03:00 |  | 24.9d | 0.04d | start no earlier than 2010-10-23 00:00 | Vicente Acosta | 3h |
| 185 | 3.2.1.7.19 | Entrega semanal de SQA |  | 1.5h | 2010-10-23 04:00 | 2010-10-23 05:30 | 167, 168, 169, 170, 171, 172, 173, 174, 175, 176, 177, 178, 179, 180, 181, 182, 183, 184 | 24.85d |  |  | Javier Madeiro | 1.5h |
| 186 | 3.2.1.8 | Buffer de error |  | 1h? | 2010-10-24 00:00 | 2010-10-24 01:00 |  | 23d | 0d | start no earlier than 2010-10-24 00:00 | Alejandro García; Diego Ricca; Federico Andrade; Federico Trinidad; Ignacio Infante; Javier Madeiro; José Cordero; Juan Ghiringhelli; Leticia Vilariño; Marcos Sander; Martín Taruselli; Vicente Acosta | 12h |

| ID | WBS | Task | Type | Duration | Start | Finish | Predecessors | Total slack | Free slack | Constraint | Resources | Work |
| --- | --- | --- | --- | --- | --- | --- | --- | --- | --- | --- | --- | --- |
| 187 | 3.2.2 | **Semana 12** |  | 7d? | 2010-10-24 01:00 | 2010-10-31 01:00 | 186 | 17.04d |  |  |  | 80h |
| 188 | 3.2.2.1 | Diseño / Implementación |  | 1d? | 2010-10-24 01:00 | 2010-10-25 01:00 |  | 23.04d |  |  |  |  |
| 189 | 3.2.2.2 | Verificación |  | 1d? | 2010-10-24 01:00 | 2010-10-25 01:00 |  | 23.04d |  |  |  |  |
| 190 | 3.2.2.3 | **Gestión del Proyecto** |  | 3.08d | 2010-10-25 00:00 | 2010-10-28 02:00 |  | 20d |  |  |  | 5h |
| 191 | 3.2.2.3.1 | Seguimiento por medio de mails, conversaciones, revisión de objetivos de fase y pedido de informes |  | 3h | 2010-10-25 00:00 | 2010-10-25 03:00 |  | 22.96d |  | start no earlier than 2010-10-25 00:00 | Juan Ghiringhelli | 3h |
| 192 | 3.2.2.3.2 | Preparar reunión quincenal |  | 2h | 2010-10-28 00:00 | 2010-10-28 02:00 |  | 20d |  | start no earlier than 2010-10-28 00:00 | Juan Ghiringhelli | 2h |
| 193 | 3.2.2.4 | **Gestión de la Calidad** |  | 0.25d? | 2010-10-24 01:00 | 2010-10-24 07:00 |  | 23.79d |  |  |  | 23h |
| 194 | 3.2.2.4.1 | **RTF Planificación del Proyecto** |  | 0.08d? | 2010-10-24 01:00 | 2010-10-24 03:00 |  | 23.88d |  |  |  | 11h |
| 195 | 3.2.2.4.1.1 | Estudio del Project del Proyecto |  | 1h? | 2010-10-24 01:00 | 2010-10-24 02:00 |  | 24d |  |  | Javier Madeiro | 1h |
| 196 | 3.2.2.4.1.2 | Revisión Técnica |  | 2h? | 2010-10-24 01:00 | 2010-10-24 03:00 |  | 23.96d |  |  | Javier Madeiro; Marcos Sander; Juan Ghiringhelli; Diego Ricca | 8h |
| 197 | 3.2.2.4.1.3 | Conclusiones, proponer acciones correctivas |  | 1h? | 2010-10-24 01:00 | 2010-10-24 02:00 |  | 23.88d | 5.92d |  | Javier Madeiro | 1h |
| 198 | 3.2.2.4.1.4 | Seguimiento de la RTF |  | 1h? | 2010-10-24 01:00 | 2010-10-24 02:00 |  | 24d |  |  | Javier Madeiro | 1h |
| 199 | 3.2.2.4.2 | Revisión de Documentos |  | 6h? | 2010-10-24 01:00 | 2010-10-24 07:00 |  | 23.79d |  | start no earlier than 2010-10-17 01:00 | Alejandro García; Javier Madeiro | 12h |
| 200 | 3.2.2.5 | Gestión de la Configuración |  | 1d? | 2010-10-24 01:00 | 2010-10-25 01:00 |  | 23.04d |  |  |  |  |
| 201 | 3.2.2.6 | **Entregables** |  | 2.27d | 2010-10-28 00:00 | 2010-10-30 06:30 |  | 17.81d |  |  |  | 40h |
| 202 | 3.2.2.6.1 | Evaluación de la verificación |  | 2h | 2010-10-30 00:00 | 2010-10-30 02:00 |  | 17.94d | 0.12d | start no earlier than 2010-10-30 00:00 | Alejandro García | 2h |
| 203 | 3.2.2.6.2 | Modelo de casos de prueba |  | 5h | 2010-10-30 00:00 | 2010-10-30 05:00 |  | 17.81d | 0d | start no earlier than 2010-10-30 00:00 | Alejandro García | 5h |
| 204 | 3.2.2.6.3 | Plan de verificación de la iteración |  | 2h | 2010-10-30 00:00 | 2010-10-30 02:00 |  | 17.94d | 0.12d | start no earlier than 2010-10-30 00:00 | Alejandro García | 2h |
| 205 | 3.2.2.6.4 | Reporte de pruebas |  | 4h | 2010-10-30 00:00 | 2010-10-30 04:00 |  | 17.85d | 0.04d | start no earlier than 2010-10-30 00:00 | Alejandro García | 4h |
| 206 | 3.2.2.6.5 | Informe de RTF |  | 1.5h | 2010-10-30 00:00 | 2010-10-30 01:30 | 197 | 17.96d | 0.15d | start no earlier than 2010-10-30 00:00 | Javier Madeiro | 1.5h |
| 207 | 3.2.2.6.6 | Materiales para capacitación |  | 2h | 2010-10-28 00:00 | 2010-10-28 02:00 |  | 19.94d | 2.12d | start no earlier than 2010-10-28 00:00 | José Cordero | 2h |
| 208 | 3.2.2.6.7 | Materiales para soporte al usuario |  | 2h | 2010-10-28 00:00 | 2010-10-28 02:00 |  | 19.94d | 2.12d | start no earlier than 2010-10-28 00:00 | José Cordero | 2h |
| 209 | 3.2.2.6.8 | Acta de reunión de equipo |  | 0.5h | 2010-10-30 00:00 | 2010-10-30 00:30 |  | 18d | 0.19d | start no earlier than 2010-10-30 00:00 | Juan Ghiringhelli | 0.5h |
| 210 | 3.2.2.6.9 | Informe de conclusiones de la fase |  | 1h | 2010-10-30 00:00 | 2010-10-30 01:00 |  | 17.98d | 0.17d | start no earlier than 2010-10-30 00:00 | Juan Ghiringhelli | 1h |
| 211 | 3.2.2.6.10 | Informe de situación de proyecto |  | 1h | 2010-10-30 00:00 | 2010-10-30 01:00 |  | 17.98d | 0.17d | start no earlier than 2010-10-30 00:00 | Juan Ghiringhelli | 1h |
| 212 | 3.2.2.6.11 | Lecciones Aprendidas |  | 0.5h | 2010-10-30 00:00 | 2010-10-30 00:30 |  | 18d | 0.19d | start no earlier than 2010-10-30 00:00 | Juan Ghiringhelli | 0.5h |
| 213 | 3.2.2.6.12 | Plan de la iteración |  | 2h | 2010-10-30 00:00 | 2010-10-30 02:00 |  | 17.94d | 0.12d | start no earlier than 2010-10-30 00:00 | Juan Ghiringhelli | 2h |
| 214 | 3.2.2.6.13 | Presentación del sistema |  | 3h | 2010-10-30 00:00 | 2010-10-30 03:00 |  | 17.9d | 0.08d | start no earlier than 2010-10-30 00:00 | Juan Ghiringhelli | 3h |
| 215 | 3.2.2.6.14 | Registro de actividades |  | 1h | 2010-10-30 00:00 | 2010-10-30 01:00 |  | 17.98d | 0.17d | start no earlier than 2010-10-30 00:00 | Juan Ghiringhelli | 1h |
| 216 | 3.2.2.6.15 | Documentación técnica |  | 1h | 2010-10-30 00:00 | 2010-10-30 01:00 |  | 17.98d | 0.17d | start no earlier than 2010-10-30 00:00 | Marcos Sander | 1h |
| 217 | 3.2.2.6.16 | Plan de desarrollo |  | 1h | 2010-10-30 00:00 | 2010-10-30 01:00 |  | 17.98d | 0.17d | start no earlier than 2010-10-30 00:00 | Marcos Sander | 1h |
| 218 | 3.2.2.6.17 | Informe de integración |  | 1h | 2010-10-30 00:00 | 2010-10-30 01:00 |  | 17.98d | 0.17d | start no earlier than 2010-10-30 00:00 | Ignacio Infante | 1h |
| 219 | 3.2.2.6.18 | Descripción de la versión |  | 2h | 2010-10-30 00:00 | 2010-10-30 02:00 |  | 17.94d | 0.12d | start no earlier than 2010-10-30 00:00 | Vicente Acosta | 2h |
| 220 | 3.2.2.6.19 | Gestión de cambios |  | 1h | 2010-10-30 00:00 | 2010-10-30 01:00 |  | 17.98d | 0.17d | start no earlier than 2010-10-30 00:00 | Vicente Acosta | 1h |
| 221 | 3.2.2.6.20 | Notas de la versión |  | 3h | 2010-10-30 00:00 | 2010-10-30 03:00 |  | 17.9d | 0.08d | start no earlier than 2010-10-30 00:00 | Vicente Acosta | 3h |
| 222 | 3.2.2.6.21 | Registro de versiones |  | 2h | 2010-10-30 00:00 | 2010-10-30 02:00 |  | 17.94d | 0.12d | start no earlier than 2010-10-30 00:00 | Vicente Acosta | 2h |
| 223 | 3.2.2.6.22 | Entrega semanal de SQA |  | 1.5h | 2010-10-30 05:00 | 2010-10-30 06:30 | 202, 203, 204, 205, 206, 207, 208, 209, 210, 211, 212, 213, 214, 215, 216, 217, 218, 219, 220, 221, 222 | 17.81d |  |  | Javier Madeiro | 1.5h |
| 224 | 3.2.2.7 | Presentación al cliente | milestone | 0h | 2010-10-27 00:00 | 2010-10-27 00:00 |  | 21.08d |  | start no earlier than 2010-10-27 00:00 |  |  |
| 225 | 3.2.2.8 | Buffer de error |  | 1h? | 2010-10-31 00:00 | 2010-10-31 01:00 |  | 16.04d | 0d | start no earlier than 2010-10-31 00:00 | Alejandro García; Diego Ricca; Federico Andrade; Federico Trinidad; Ignacio Infante; Javier Madeiro; José Cordero; Juan Ghiringhelli; Leticia Vilariño; Marcos Sander; Martín Taruselli; Vicente Acosta | 12h |

| ID | WBS | Task | Type | Duration | Start | Finish | Predecessors | Total slack | Free slack | Constraint | Resources | Work |
| --- | --- | --- | --- | --- | --- | --- | --- | --- | --- | --- | --- | --- |
| 226 | 3.2.3 | **Semana 13** |  | 7.12d? | 2010-10-31 01:00 | 2010-11-07 04:00 | 225 | 9.92d |  |  |  | 68h |
| 227 | 3.2.3.1 | Diseño / Implementación |  | 1d? | 2010-10-31 01:00 | 2010-11-01 01:00 |  | 16.04d |  |  |  |  |
| 228 | 3.2.3.2 | Verificación |  | 1d? | 2010-10-31 01:00 | 2010-11-01 01:00 |  | 16.04d |  |  |  |  |
| 229 | 3.2.3.3 | **Gestión del Proyecto** |  | 6.17d | 2010-11-01 00:00 | 2010-11-07 04:00 |  | 9.92d |  |  |  | 11h |
| 230 | 3.2.3.3.1 | Seguimiento por medio de mails, conversaciones, revisión de objetivos de fase y pedido de informes |  | 3h | 2010-11-01 00:00 | 2010-11-01 03:00 |  | 15.96d |  | start no earlier than 2010-11-01 00:00 | Juan Ghiringhelli | 3h |
| 231 | 3.2.3.3.2 | Evaluar la fase |  | 2h | 2010-11-04 00:00 | 2010-11-04 02:00 |  | 13d |  | start no earlier than 2010-11-04 00:00 | Juan Ghiringhelli | 2h |
| 232 | 3.2.3.3.3 | Seguimiento en jornadas de implementación |  | 4h | 2010-11-07 00:00 | 2010-11-07 04:00 |  | 9.92d |  | start no earlier than 2010-11-07 00:00 | Juan Ghiringhelli | 4h |
| 233 | 3.2.3.3.4 | Preparar reunión fin de fase |  | 2h | 2010-11-04 00:00 | 2010-11-04 02:00 |  | 13d |  | start no earlier than 2010-11-04 00:00 | Juan Ghiringhelli | 2h |
| 234 | 3.2.3.4 | **Gestión de la Calidad** |  | 0.25d? | 2010-10-31 01:00 | 2010-10-31 07:00 |  | 16.79d |  |  |  | 12h |
| 235 | 3.2.3.4.1 | Revisión de Documentos |  | 6h? | 2010-10-31 01:00 | 2010-10-31 07:00 |  | 16.79d |  | start no earlier than 2010-10-17 01:00 | Alejandro García; Javier Madeiro | 12h |
| 236 | 3.2.3.5 | Gestión de la Configuración |  | 1d? | 2010-10-31 01:00 | 2010-11-01 01:00 |  | 16.04d |  |  |  |  |
| 237 | 3.2.3.6 | **Entregables** |  | 3.27d | 2010-11-03 00:00 | 2010-11-06 06:30 |  | 10.81d |  |  |  | 33h |
| 238 | 3.2.3.6.1 | Evaluación de la verificación |  | 2h | 2010-11-06 00:00 | 2010-11-06 02:00 |  | 10.94d | 0.12d | start no earlier than 2010-11-06 00:00 | Alejandro García | 2h |
| 239 | 3.2.3.6.2 | Informe de verificación del sistema |  | 3h | 2010-11-06 00:00 | 2010-11-06 03:00 |  | 10.9d | 0.08d | start no earlier than 2010-11-06 00:00 | Alejandro García | 3h |
| 240 | 3.2.3.6.3 | Reporte de pruebas |  | 5h | 2010-11-06 00:00 | 2010-11-06 05:00 |  | 10.81d | 0d | start no earlier than 2010-11-06 00:00 | Alejandro García | 5h |
| 241 | 3.2.3.6.4 | Reporte Final de Pruebas de Aceptacion |  | 4h | 2010-11-06 00:00 | 2010-11-06 04:00 |  | 10.85d | 0.04d | start no earlier than 2010-11-06 00:00 | Alejandro García | 4h |
| 242 | 3.2.3.6.5 | Informe de revisión de SQA |  | 2h | 2010-11-06 00:00 | 2010-11-06 02:00 |  | 10.94d | 0.12d | start no earlier than 2010-11-06 00:00 | Javier Madeiro | 2h |
| 243 | 3.2.3.6.6 | Materiales para capacitación |  | 2h | 2010-11-04 00:00 | 2010-11-04 02:00 |  | 12.94d | 2.12d | start no earlier than 2010-11-04 00:00 | José Cordero | 2h |
| 244 | 3.2.3.6.7 | Materiales para soporte al usuario |  | 2h | 2010-11-04 00:00 | 2010-11-04 02:00 |  | 12.94d | 2.12d | start no earlier than 2010-11-04 00:00 | José Cordero | 2h |
| 245 | 3.2.3.6.8 | Acta de reunión con el director del proyecto |  | 0.5h | 2010-11-03 00:00 | 2010-11-03 00:30 |  | 14d | 3.19d | start no earlier than 2010-11-03 00:00 | Juan Ghiringhelli | 0.5h |
| 246 | 3.2.3.6.9 | Informe de situación de proyecto |  | 1h | 2010-11-06 00:00 | 2010-11-06 01:00 |  | 10.98d | 0.17d | start no earlier than 2010-11-06 00:00 | Juan Ghiringhelli | 1h |
| 247 | 3.2.3.6.10 | Presentación al director del proyecto |  | 2h | 2010-11-03 00:00 | 2010-11-03 02:00 |  | 13.94d | 3.12d | start no earlier than 2010-11-03 00:00 | Juan Ghiringhelli | 2h |
| 248 | 3.2.3.6.11 | Registro de actividades |  | 1h | 2010-11-06 00:00 | 2010-11-06 01:00 |  | 10.98d | 0.17d | start no earlier than 2010-11-06 00:00 | Juan Ghiringhelli | 1h |
| 249 | 3.2.3.6.12 | Informe de verificación de integración |  | 1h | 2010-11-06 00:00 | 2010-11-06 01:00 |  | 10.98d | 0.17d | start no earlier than 2010-11-06 00:00 | Alejandro García; Ignacio Infante | 2h |
| 250 | 3.2.3.6.13 | Descripción de la versión |  | 2h | 2010-11-06 00:00 | 2010-11-06 02:00 |  | 10.94d | 0.12d | start no earlier than 2010-11-06 00:00 | Vicente Acosta | 2h |
| 251 | 3.2.3.6.14 | Informe de la línea base del proyecto |  | 3h | 2010-11-06 00:00 | 2010-11-06 03:00 |  | 10.9d | 0.08d | start no earlier than 2010-11-06 00:00 | Vicente Acosta | 3h |
| 252 | 3.2.3.6.15 | Entrega semanal de SQA |  | 1.5h | 2010-11-06 05:00 | 2010-11-06 06:30 | 238, 239, 240, 241, 242, 243, 244, 245, 246, 247, 248, 249, 250, 251 | 10.81d |  | start no earlier than 2010-11-06 00:00 | Javier Madeiro | 1.5h |
| 253 | 3.2.3.7 | Presentación al cliente | milestone | 0h | 2010-11-03 00:00 | 2010-11-03 00:00 |  | 14.08d |  | start no earlier than 2010-11-03 00:00 | Juan Ghiringhelli |  |
| 254 | 3.2.3.8 | Buffer de error |  | 1h? | 2010-11-07 00:00 | 2010-11-07 01:00 |  | 10.04d |  | start no earlier than 2010-11-07 00:00 | Alejandro García; Diego Ricca; Federico Andrade; Federico Trinidad; Ignacio Infante; Javier Madeiro; José Cordero; Juan Ghiringhelli; Leticia Vilariño; Marcos Sander; Martín Taruselli; Vicente Acosta | 12h |

| ID | WBS | Task | Type | Duration | Start | Finish | Predecessors | Total slack | Free slack | Constraint | Resources | Work |
| --- | --- | --- | --- | --- | --- | --- | --- | --- | --- | --- | --- | --- |
| 255 | 4 | **Fase Implantación** |  | 10.92d? | 2010-11-07 04:00 | 2010-11-18 02:00 | 45 | 0d |  |  |  | 90h |
| 256 | 4.1 | **Iteración 1** |  | 10.92d? | 2010-11-07 04:00 | 2010-11-18 02:00 |  | 0d |  |  |  | 90h |
| 257 | 4.1.1 | **Semana 14** |  | 10.92d? | 2010-11-07 04:00 | 2010-11-18 02:00 |  | 0d |  |  |  | 90h |
| 258 | 4.1.1.1 | Diseño / Implementación |  | 1d? | 2010-11-07 04:00 | 2010-11-08 04:00 |  | 9.92d |  |  |  |  |
| 259 | 4.1.1.2 | Verificación |  | 1d? | 2010-11-07 04:00 | 2010-11-08 04:00 |  | 9.92d |  |  |  |  |
| 260 | 4.1.1.3 | **Gestión del Proyecto** |  | 2.08d | 2010-11-16 00:00 | 2010-11-18 02:00 |  | 0d |  |  |  | 12h |
| 261 | 4.1.1.3.1 | Evaluación de satisfacción del cliente |  | 2h | 2010-11-17 00:00 | 2010-11-17 02:00 |  | 1d |  | start no earlier than 2010-11-17 00:00 | Juan Ghiringhelli; Javier Madeiro; Marcos Sander | 6h |
| 262 | 4.1.1.3.2 | Preparar presentación al director |  | 2h | 2010-11-18 00:00 | 2010-11-18 02:00 |  | 0d |  | start no earlier than 2010-11-18 00:00 | Juan Ghiringhelli | 2h |
| 263 | 4.1.1.3.3 | Preparar presentación final del proyecto |  | 4h | 2010-11-16 00:00 | 2010-11-16 04:00 |  | 1.92d |  | start no earlier than 2010-11-16 00:00 | Juan Ghiringhelli | 4h |
| 264 | 4.1.1.4 | **Gestión de la Calidad** |  | 0.25d? | 2010-11-07 04:00 | 2010-11-07 10:00 |  | 10.67d |  |  |  | 12h |
| 265 | 4.1.1.4.1 | Revisión de Documentos |  | 6h? | 2010-11-07 04:00 | 2010-11-07 10:00 |  | 10.67d |  | start no earlier than 2010-10-17 01:00 | Alejandro García; Javier Madeiro | 12h |
| 266 | 4.1.1.5 | Gestión de la Configuración |  | 1d? | 2010-11-07 04:00 | 2010-11-08 04:00 |  | 9.92d |  |  |  |  |
| 267 | 4.1.1.6 | **Entregables** |  | 3.48d | 2010-11-10 00:00 | 2010-11-13 11:30 |  | 4.6d |  |  |  | 54h |
| 268 | 4.1.1.6.1 | Informe final de verificación |  | 2h | 2010-11-13 00:00 | 2010-11-13 02:00 |  | 4.94d | 0.33d | start no earlier than 2010-11-13 00:00 | Alejandro García | 2h |
| 269 | 4.1.1.6.2 | Reporte de pruebas |  | 4h | 2010-11-13 00:00 | 2010-11-13 04:00 |  | 4.85d | 0.25d | start no earlier than 2010-11-13 00:00 | Alejandro García | 4h |
| 270 | 4.1.1.6.3 | Reporte Final de Pruebas de Aceptacion |  | 4h | 2010-11-13 00:00 | 2010-11-13 04:00 |  | 4.85d | 0.25d | start no earlier than 2010-11-13 00:00 | Alejandro García | 4h |
| 271 | 4.1.1.6.4 | Infome final de calidad |  | 8h | 2010-11-13 00:00 | 2010-11-13 08:00 |  | 4.69d | 0.08d | start no earlier than 2010-11-13 00:00 | Javier Madeiro | 8h |
| 272 | 4.1.1.6.5 | Informe de revisión de SQA |  | 2h | 2010-11-13 00:00 | 2010-11-13 02:00 |  | 4.94d | 0.33d | start no earlier than 2010-11-13 00:00 | Javier Madeiro | 2h |
| 273 | 4.1.1.6.6 | Materiales para soporte al usuario |  | 2h | 2010-11-13 00:00 | 2010-11-13 02:00 |  | 4.94d | 0.33d | start no earlier than 2010-11-13 00:00 | José Cordero | 2h |
| 274 | 4.1.1.6.7 | Acta de reunión de equipo |  | 1h | 2010-11-13 00:00 | 2010-11-13 01:00 |  | 4.98d | 0.38d | start no earlier than 2010-11-13 00:00 | Juan Ghiringhelli | 1h |
| 275 | 4.1.1.6.8 | Informe de conclusiones de la fase |  | 1h | 2010-11-13 00:00 | 2010-11-13 01:00 |  | 4.98d | 0.38d | start no earlier than 2010-11-13 00:00 | Juan Ghiringhelli | 1h |
| 276 | 4.1.1.6.9 | Informe de situación de proyecto |  | 1h | 2010-11-13 00:00 | 2010-11-13 01:00 |  | 4.98d | 0.38d | start no earlier than 2010-11-13 00:00 | Juan Ghiringhelli | 1h |
| 277 | 4.1.1.6.10 | Informe final de proyecto |  | 4h | 2010-11-13 00:00 | 2010-11-13 04:00 |  | 4.85d | 0.25d | start no earlier than 2010-11-13 00:00 | Juan Ghiringhelli | 4h |
| 278 | 4.1.1.6.11 | Lecciones Aprendidas |  | 0.5h | 2010-11-13 00:00 | 2010-11-13 00:30 |  | 5d | 0.4d | start no earlier than 2010-11-13 00:00 | Juan Ghiringhelli | 0.5h |
| 279 | 4.1.1.6.12 | Presentación de cierre de proyecto |  | 4h | 2010-11-13 00:00 | 2010-11-13 04:00 |  | 4.85d | 0.25d | start no earlier than 2010-11-13 00:00 | Juan Ghiringhelli | 4h |
| 280 | 4.1.1.6.13 | Registro de actividades |  | 1h | 2010-11-13 00:00 | 2010-11-13 01:00 |  | 4.98d | 0.38d | start no earlier than 2010-11-13 00:00 | Juan Ghiringhelli | 1h |
| 281 | 4.1.1.6.14 | Encuesta de satisfacción del cliente |  | 2h | 2010-11-10 00:00 | 2010-11-10 02:00 |  | 7.94d | 3.33d | start no earlier than 2010-11-10 00:00 | Ignacio Infante; Juan Ghiringhelli | 4h |
| 282 | 4.1.1.6.15 | Documentación técnica |  | 1h | 2010-11-13 00:00 | 2010-11-13 01:00 |  | 4.98d | 0.38d | start no earlier than 2010-11-13 00:00 | Marcos Sander | 1h |
| 283 | 4.1.1.6.16 | Versión alfa del producto | milestone | 0h | 2010-11-13 00:00 | 2010-11-13 00:00 |  | 5.02d | 0.42d | start no earlier than 2010-11-13 00:00 | Marcos Sander; Vicente Acosta |  |
| 284 | 4.1.1.6.17 | Informe final de configuración |  | 10h | 2010-11-13 00:00 | 2010-11-13 10:00 |  | 4.6d | 0d | start no earlier than 2010-11-13 00:00 | Vicente Acosta | 10h |
| 285 | 4.1.1.6.18 | Notas de la versión |  | 3h | 2010-11-13 00:00 | 2010-11-13 03:00 |  | 4.9d |  | start no earlier than 2010-11-13 00:00 | Vicente Acosta | 3h |
| 286 | 4.1.1.6.19 | Entrega semanal de SQA |  | 1.5h | 2010-11-13 10:00 | 2010-11-13 11:30 | 268, 269, 270, 271, 272, 273, 274, 275, 276, 277, 278, 279, 280, 281, 282, 283, 284, 285 | 4.6d |  |  | Javier Madeiro | 1.5h |
| 287 | 4.1.1.7 | Presentación al cliente | milestone | 0h | 2010-11-08 00:00 | 2010-11-08 00:00 |  | 10.08d |  | start no earlier than 2010-11-08 00:00 | Juan Ghiringhelli |  |
| 288 | 4.1.1.8 | Buffer de error |  | 1h? | 2010-11-14 00:00 | 2010-11-14 01:00 |  | 4.04d |  | start no earlier than 2010-11-14 00:00 | Alejandro García; Diego Ricca; Federico Andrade; Federico Trinidad; Ignacio Infante; Javier Madeiro; José Cordero; Juan Ghiringhelli; Leticia Vilariño; Marcos Sander; Martín Taruselli; Vicente Acosta | 12h |
